# Planning Migracion

Schedule from MS Project, 2022-10-17 to 2022-11-17.

## Calendars

- Estándar: Mon-Fri 09:00-13:00, 15:00-19:00; Sat-Sun off.

## Resources

| Resource |
| --- |
| Eléctrico1 |
| Eléctrico2 |
| Eléctrico3 |
| Supervisor1 |

## Schedule

| ID | WBS | Task | Type | Duration | Start | Finish | Predecessors | Total slack | Free slack | Constraint | Resources | Work |
| --- | --- | --- | --- | --- | --- | --- | --- | --- | --- | --- | --- | --- |
| 1 | 1 | **Ingeniería de detalles para migración** |  | 24d | 2022-10-17 | 2022-11-17 |  | 0d |  |  |  | 312h |
| 2 | 1.1 | **INICIO** |  | 0d | 2022-10-17 | 2022-10-17 |  | 0d |  |  |  |  |
| 3 | 1.1.1 | Recepción de OC | milestone | 0d | 2022-10-17 | 2022-10-17 |  | 0d |  | start no earlier than 2022-10-17 |  |  |
| 4 | 1.2 | **Trabajos fuera de planta** |  | 5d | 2022-10-17 | 2022-10-21 |  | 0d |  |  |  | 56h |
| 5 | 1.2.1 | Recepción de materiales de nuevos. Armado de pañol fuera de planta | milestone | 0d | 2022-10-17 | 2022-10-17 | 3 | 0d |  |  | Supervisor1 |  |
| 6 | 1.2.2 | **Armado nuevo tablero TB1739** |  | 2d | 2022-10-17 | 2022-10-18 |  | 3d |  |  |  | 16h |
| 7 | 1.2.2.1 | Armado de tablero TB1739 |  | 1d | 2022-10-17 | 2022-10-17 | 5 | 3d | 0d |  | Eléctrico1 | 8h |
| 8 | 1.2.2.2 | Calado de tablero TB1739 para luces | milestone | 0d | 2022-10-17 | 2022-10-17 | 7 | 3d | 0d |  | Eléctrico1 |  |
| 9 | 1.2.2.3 | Montaje de rieles y cablecanales en TB1739 | milestone | 0d | 2022-10-17 | 2022-10-17 | 8 | 3d | 0d |  | Eléctrico1 |  |
| 10 | 1.2.2.4 | Montaje de equipos nuevos en TB1739 |  | 1d | 2022-10-18 | 2022-10-18 | 9 | 3d | 0d |  | Eléctrico1 | 8h |
| 11 | 1.2.2.5 | Colocar puntas, tags y conectar conductores en TB1739 | milestone | 0d | 2022-10-18 | 2022-10-18 | 10 | 3d | 0d |  | Eléctrico1 |  |
| 12 | 1.2.2.6 | Registrar cambios para CAO en TB1739 | milestone | 0d | 2022-10-18 | 2022-10-18 | 11 | 3d |  |  | Eléctrico1 |  |
| 13 | 1.2.3 | **Armado nuevo tablero TB1740** |  | 5d | 2022-10-17 | 2022-10-21 |  | 0d |  |  |  | 40h |
| 14 | 1.2.3.1 | Armado de tablero TB1740 |  | 1d | 2022-10-17 | 2022-10-17 | 5 | 0d |  |  | Eléctrico2 | 8h |
| 15 | 1.2.3.2 | Calado de tablero TB1740 para luces | milestone | 0d | 2022-10-17 | 2022-10-17 | 14 | 0d |  |  | Eléctrico2 |  |
| 16 | 1.2.3.3 | Montaje de rieles y cablecanales en TB1740 |  | 1d | 2022-10-18 | 2022-10-18 | 15 | 0d |  |  | Eléctrico2 | 8h |
| 17 | 1.2.3.4 | Montaje de equipos nuevos en TB1740 |  | 1d | 2022-10-19 | 2022-10-19 | 16 | 0d |  |  | Eléctrico2 | 8h |
| 18 | 1.2.3.5 | Colocar puntas, tags y conectar conductores en TB1740 |  | 2d | 2022-10-20 | 2022-10-21 | 17 | 0d |  |  | Eléctrico2 | 16h |
| 19 | 1.2.3.6 | Registrar cambios para CAO en TB1740 | milestone | 0d | 2022-10-21 | 2022-10-21 | 18 | 0d |  |  | Eléctrico2 |  |
| 20 | 1.3 | **Trabajo dentro de planta** |  | 24d | 2022-10-17 | 2022-11-17 |  | 0d |  |  |  | 256h |
| 21 | 1.3.1 | **Recepción** |  | 9d | 2022-10-17 | 2022-10-27 |  | 5d |  |  |  |  |
| 22 | 1.3.1.1 | Recepción de materiales de BASF. Armado de pañol | milestone | 0d | 2022-10-17 | 2022-10-17 | 5SS | 24d |  |  |  |  |
| 23 | 1.3.1.2 | Despacho y recepción de tableros realizados en el taller |  | 3d | 2022-10-24 | 2022-10-26 | 12, 19 | 0d |  |  |  |  |
| 24 | 1.3.1.3 | Ubicación de los tableros en planta según disponga BASF |  | 1d | 2022-10-27 | 2022-10-27 | 23 | 0d |  |  |  |  |

Notes:
- 2: INICIO
- 3: Recepción de Orden de Compra. Inicio de obra
- 7: Ensamblaje de tablero nuevo
- 9: Montaje de chapa de fondo, rieles y cablecanales
- 10: Montaje de distribuidor de tensión, interruptores, RCD y luces
- 11: Realizar el cableado de todos los equipos con las correspondientes puntas y tags. Taguear conductores
- 14: Ensamblaje de tablero nuevo
- 16: Montaje de chapa de fondo, rieles y cablecanales
- 17: Montaje de distribuidor de tensión, interruptores, guardamotores, contactores, etc
- 18: Realizar el cableado de todos los equipos con las correspondientes puntas y tags. Taguear a las borneras y conductores

| ID | WBS | Task | Type | Duration | Start | Finish | Predecessors | Total slack | Free slack | Resources | Work |
| --- | --- | --- | --- | --- | --- | --- | --- | --- | --- | --- | --- |
| 25 | 1.3.2 | **Montaje Sector Servicios** |  | 8d | 2022-10-27 | 2022-11-08 |  | 0d |  |  | 112h |
| 26 | 1.3.2.1 | Alistar sector Servicios | milestone | 0d | 2022-10-27 | 2022-10-27 | 24 | 0d |  | Eléctrico1 |  |
| 27 | 1.3.2.2 | **Montaje de tablero TB1739** |  | 1d | 2022-10-27 | 2022-10-28 |  | 0d |  |  | 8h |
| 28 | 1.3.2.2.1 | Retraer conductores de potencia | milestone | 0d | 2022-10-27 | 2022-10-27 | 26 | 0d |  | Eléctrico1; Eléctrico2 |  |
| 29 | 1.3.2.2.2 | Presentación y montaje de tablero 1739 |  | 1d | 2022-10-28 | 2022-10-28 | 28 | 0d |  | Eléctrico2 | 8h |
| 30 | 1.3.2.3 | **Montaje de nuevo tablero TB1740** |  | 3d | 2022-10-28 | 2022-11-02 |  | 0d |  |  | 40h |
| 31 | 1.3.2.3.1 | Identificar todos los conductores que se van a desconectar en TB1740 | milestone | 0d | 2022-10-28 | 2022-10-28 | 29, 26 | 0d |  | Eléctrico1; Eléctrico2 |  |
| 32 | 1.3.2.3.2 | Desconectar todos los conductores que acometen a TB1740 |  | 1d | 2022-10-28 | 2022-10-31 | 31 | 0d |  | Eléctrico1; Eléctrico2 | 8h |
| 33 | 1.3.2.3.3 | Desmontar tablero TB1740 | milestone | 0d | 2022-10-31 | 2022-10-31 | 32 | 0d |  | Eléctrico1; Eléctrico2 |  |
| 34 | 1.3.2.3.4 | Montar nuevo tablero TB1740 |  | 1d | 2022-11-01 | 2022-11-01 | 33 | 0d |  | Eléctrico1; Eléctrico2 | 16h |
| 35 | 1.3.2.3.5 | Colocar puntas, tags y conectar conductores en TB1740 |  | 1d | 2022-11-02 | 2022-11-02 | 34 | 0d |  | Eléctrico1; Eléctrico2 | 16h |
| 36 | 1.3.2.3.6 | Registrar cambios para CAO en TB1740 | milestone | 0d | 2022-11-02 | 2022-11-02 | 35 | 0d |  | Supervisor1 |  |
| 37 | 1.3.2.4 | **Modificaciones de tablero TB1741** |  | 1d | 2022-11-02 | 2022-11-03 |  | 0d |  |  | 16h |
| 38 | 1.3.2.4.1 | Identificar todos los conductores que se van a desconectar en TB1741 | milestone | 0d | 2022-11-02 | 2022-11-02 | 36, 26 | 0d |  | Eléctrico1; Eléctrico2 |  |
| 39 | 1.3.2.4.2 | Reemplazar interruptor tripolar por diferencial | milestone | 0d | 2022-11-02 | 2022-11-02 | 38 | 2d | 0d | Eléctrico1 |  |
| 40 | 1.3.2.4.3 | Montar aparatos y borneras nuevas | milestone | 0d | 2022-11-02 | 2022-11-02 | 39 | 2d | 0d | Eléctrico1; Eléctrico2 |  |
| 41 | 1.3.2.4.4 | Colocar puntas, tags y conectar conductores en TB1741 |  | 1d | 2022-11-03 | 2022-11-03 | 40 | 2d | 0d | Eléctrico1; Eléctrico2 | 16h |
| 42 | 1.3.2.4.5 | Registrar cambios para CAO en TB1741 | milestone | 0d | 2022-11-03 | 2022-11-03 | 41 | 2d | 0d | Supervisor1 |  |
| 43 | 1.3.2.5 | **Montaje de canalizaciones en Servicios** |  | 1d | 2022-11-04 | 2022-11-04 |  | 5d |  |  | 16h |
| 44 | 1.3.2.5.1 | Montaje de bandejas |  | 1d | 2022-11-04 | 2022-11-04 | 42 | 5d | 0d | Eléctrico1; Eléctrico2 | 16h |
| 45 | 1.3.2.6 | **Montaje de conductores en Servicios** |  | 2d | 2022-11-04 | 2022-11-08 |  | 7d |  |  | 32h |
| 46 | 1.3.2.6.1 | Montaje de conductores de potencia de TB1739 a 1740 y 1741 | milestone | 0d | 2022-11-04 | 2022-11-04 | 44 | 7d | 0d | Eléctrico1; Eléctrico2 |  |
| 47 | 1.3.2.6.2 | Montaje de multipolares de señales DI y DO entre tableros |  | 1d | 2022-11-07 | 2022-11-07 | 46 | 7d | 0d | Eléctrico1; Eléctrico2 | 16h |
| 48 | 1.3.2.6.3 | Montaje de cables de señal |  | 1d | 2022-11-08 | 2022-11-08 | 47 | 7d |  | Eléctrico1; Eléctrico2 | 16h |

Notes:
- 26: Desenergizar todo el sector y comprobar ausencia de tensión previo al arranque
- 28: Retraer los dos conductores de potencia de TB1740 y TB1740
- 31: Para realizar un cableado con estos conductores a los equipos nuevos de forma más ordenada
- 33: Retirarlo al espacio que permita BASF
- 36: Registrar cambios respecto a la Ingeniería de Detalles para el Conforma A Obra
- 38: Para realizar un cableado con estos conductores a los equipos nuevos de forma más ordenada
- 39: Desmontar interruptor tripolar. Montar interruptor diferencial tetrapolar
- 40: Montar backplanes, módulos de remota, transformador de 24 Vac, fuente 24 Vcc y riestras de borneras
- 42: Registrar cambios respecto a la Ingeniería de Detalles para el Conforma A Obra
- 44: Instalación de soportes. Presentación y montaje de bandejas
- 46: Conductores unipolares a TB1740 y conductor multipolar a TB1741 desde TB1739

| ID | WBS | Task | Type | Duration | Start | Finish | Predecessors | Total slack | Free slack | Resources | Work |
| --- | --- | --- | --- | --- | --- | --- | --- | --- | --- | --- | --- |
| 49 | 1.3.3 | **Montaje Sector Producción** |  | 11d | 2022-10-27 | 2022-11-11 |  | 2d |  |  | 96h |
| 50 | 1.3.3.1 | **Modificación de tablero TB1220** |  | 7d | 2022-10-27 | 2022-11-07 |  | 0d |  |  | 48h |
| 51 | 1.3.3.1.1 | Alistar tablero TB1220 | milestone | 0d | 2022-10-27 | 2022-10-27 | 24 | 2d | 0d | Eléctrico3 |  |
| 52 | 1.3.3.1.2 | Retirar conductores de potencia de los variadores por completo en TB1220 |  | 1d | 2022-10-28 | 2022-10-28 | 51, 26 | 2d | 0d | Eléctrico3; Eléctrico1 | 16h |
| 53 | 1.3.3.1.3 | Desmontar los variadores Altivar y sus protecciones en TB1220 | milestone | 0d | 2022-10-28 | 2022-10-28 | 52 | 2d | 0d | Eléctrico3 |  |
| 54 | 1.3.3.1.4 | Identificar todos los conductores que se van a desconectar en TB1220 |  | 1d | 2022-10-31 | 2022-10-31 | 53 | 2d |  | Eléctrico3 | 8h |
| 55 | 1.3.3.1.5 | Desmontar aparatos y PLC Schneider en TB1220 | milestone | 0d | 2022-11-02 | 2022-11-02 | 54, 31, 38 | 0d |  | Eléctrico3 |  |
| 56 | 1.3.3.1.6 | Retirar rieles DIN y cablecanales en TB1220 |  | 1d | 2022-11-03 | 2022-11-03 | 55 | 0d |  | Eléctrico3 | 8h |
| 57 | 1.3.3.1.7 | Montar rieles y cablecanales nuevos en TB1220 | milestone | 0d | 2022-11-03 | 2022-11-03 | 56 | 0d |  | Eléctrico3 |  |
| 58 | 1.3.3.1.8 | Redistribuir y montar aparatos nuevos en TB1220 |  | 1d | 2022-11-04 | 2022-11-04 | 57 | 0d |  | Eléctrico3 | 8h |
| 59 | 1.3.3.1.9 | Colocar puntas, tags y conectar conductores en TB1220 |  | 1d | 2022-11-07 | 2022-11-07 | 58 | 0d |  | Eléctrico3 | 8h |
| 60 | 1.3.3.1.10 | Registrar cambios para CAO en TB1220 | milestone | 0d | 2022-11-07 | 2022-11-07 | 59 | 0d |  | Supervisor1 |  |
| 61 | 1.3.3.2 | **Modificaciones de tablero TB1221** |  | 1d | 2022-11-07 | 2022-11-08 |  | 0d |  |  | 8h |
| 62 | 1.3.3.2.1 | Alistar tablero TB1221 | milestone | 0d | 2022-11-07 | 2022-11-07 | 60, 36, 42 | 0d |  | Eléctrico3 |  |
| 63 | 1.3.3.2.2 | Identificar todos los conductores que se van a desconectar en TB1221 | milestone | 0d | 2022-11-07 | 2022-11-07 | 62 | 0d |  | Eléctrico3 |  |
| 64 | 1.3.3.2.3 | Desmontar remota Schneider en TB1221 | milestone | 0d | 2022-11-07 | 2022-11-07 | 63 | 0d |  | Eléctrico3 |  |
| 65 | 1.3.3.2.4 | Armar y montar remota Siemens en TB1221 | milestone | 0d | 2022-11-07 | 2022-11-07 | 64 | 0d |  | Eléctrico3 |  |
| 66 | 1.3.3.2.5 | Montar borneras de entradas digitales | milestone | 0d | 2022-11-07 | 2022-11-07 | 64 | 0d |  | Eléctrico3 |  |
| 67 | 1.3.3.2.6 | Colocar puntas, tags y conectar conductores en TB1221 |  | 1d | 2022-11-08 | 2022-11-08 | 65, 66 | 0d |  | Eléctrico3 | 8h |
| 68 | 1.3.3.2.7 | Registrar cambios para CAO en TB1221 | milestone | 0d | 2022-11-08 | 2022-11-08 | 67 | 0d |  | Supervisor1 |  |
| 69 | 1.3.3.3 | **Modificaciones de tablero TB1226** |  | 2d | 2022-11-08 | 2022-11-10 |  | 0d |  |  | 24h |
| 70 | 1.3.3.3.1 | Alistar tablero TB1226 | milestone | 0d | 2022-11-08 | 2022-11-08 | 68, 19, 12 | 0d |  | Eléctrico3 |  |
| 71 | 1.3.3.3.2 | Identificar todos los conductores que se van a desconectar en TB1226 | milestone | 0d | 2022-11-08 | 2022-11-08 | 68, 19, 12 | 7d |  | Eléctrico3 |  |
| 72 | 1.3.3.3.3 | Reemplazar interruptor tripolar por tetrapolar y RCD | milestone | 0d | 2022-11-08 | 2022-11-08 | 70 | 0d |  | Eléctrico3 |  |
| 73 | 1.3.3.3.4 | Desmontar SINAMICS G120 15 kW | milestone | 0d | 2022-11-08 | 2022-11-08 | 72, 39 | 0d |  | Eléctrico3 |  |
| 74 | 1.3.3.3.5 | Montar riel y cablecanales nuevos | milestone | 0d | 2022-11-08 | 2022-11-08 | 73 | 0d |  | Eléctrico1; Eléctrico2 |  |
| 75 | 1.3.3.3.6 | Montar equipos | milestone | 0d | 2022-11-08 | 2022-11-08 | 74 | 0d |  | Eléctrico3 |  |
| 76 | 1.3.3.3.7 | Calar puertas y montar BOPS |  | 1d | 2022-11-09 | 2022-11-09 | 75 | 0d |  | Eléctrico2; Eléctrico1 | 16h |
| 77 | 1.3.3.3.8 | Colocar puntas, tags y conectar conductores en TB1226 | milestone | 0d | 2022-11-09 | 2022-11-09 | 76 | 0d |  | Eléctrico3 |  |
| 78 | 1.3.3.3.9 | Registrar cambios para CAO en TB1226 |  | 1d | 2022-11-10 | 2022-11-10 | 77 | 0d |  | Supervisor1 | 8h |

Notes:
- 51: Desenergizar tablero y comprobar ausencia de tensión previo al arranque
- 52: Retraerlos por completo hasta los bornes de los respectivos motores
- 53: Retirar variadores y sus interruptores magnéticos
- 54: Para realizar un cableado con estos conductores a los equipos nuevos de forma más ordenada
- 55: Desmontar switches, fuentes, PLC y otros
- 58: Se montarán las protecciones generales, las de alimentación de la remota, la remota, el switch, etc. Se redistribuirán las remotas y los interruptores actuales
- 60: Registrar cambios respecto a la Ingeniería de Detalles para el Conforma A Obra
- 62: Desenergizar tablero y comprobar ausencia de tensión previo al arranque
- 63: Para realizar un cableado con estos conductores a los equipos nuevos de forma más ordenada
- 66: Borneras XDI09 y XDI10
- 67: Reconectar los cables actuales y realizar el cableado de los dos nuevos módulos a las dos nuevas borneras XD09 y XD10 con las correspondientes puntas y tags. Retaguear a las borneras actuales
- 70: Desenergizar tablero y comprobar ausencia de tensión previo al arranque
- 71: Para realizar un cableado con estos conductores a los equipos nuevos de forma más ordenada
- 72: Desmontar interruptor tripolar. Montar interruptor tripolar con RCD
- 75: Montar variadores SINAMICS G120 11 y 15 kW. Montar interruptor, switch y distribución de 24 Vcc

| ID | WBS | Task | Type | Duration | Start | Finish | Predecessors | Total slack | Resources | Work |
| --- | --- | --- | --- | --- | --- | --- | --- | --- | --- | --- |
| 79 | 1.3.3.4 | **Montaje de canalizaciones en Producción** |  | 1d | 2022-11-10 | 2022-11-11 |  | 0d |  | 16h |
| 80 | 1.3.3.4.1 | Montaje de soporte trapecio para bandeja actual | milestone | 0d | 2022-11-10 | 2022-11-10 | 78 | 0d | Eléctrico3 |  |
| 81 | 1.3.3.4.2 | Montaje tramo recto de bandeja |  | 1d | 2022-11-11 | 2022-11-11 | 80 | 0d | Eléctrico1; Eléctrico2 | 16h |
| 82 | 1.3.3.5 | **Montaje de conductores en Producción** |  | 0d | 2022-11-11 | 2022-11-11 |  | 0d |  |  |
| 83 | 1.3.3.5.1 | Montaje de conductores de variadores a sus motores | milestone | 0d | 2022-11-11 | 2022-11-11 | 81, 44 | 0d | Eléctrico1; Eléctrico2 |  |
| 84 | 1.3.4 | **Montaje de nueva red Profinet** |  | 2d | 2022-11-10 | 2022-11-14 |  | 1d |  | 8h |
| 85 | 1.3.4.1 | Montaje de nuevo switch de Sala de Control | milestone | 0d | 2022-11-10 | 2022-11-10 | 80 | 5d | Eléctrico3 |  |
| 86 | 1.3.4.2 | Montaje de nueva red Profinet |  | 1d | 2022-11-14 | 2022-11-14 | 83 | 0d | Eléctrico3 | 8h |
| 87 | 1.3.5 | **Puesta en marcha** |  | 3d | 2022-11-15 | 2022-11-17 |  | 0d |  | 40h |
| 88 | 1.3.5.1 | Ejecución de memoria FAT | milestone | 2d | 2022-11-15 | 2022-11-16 | 86 | 0d | Eléctrico1; Supervisor1 | 32h |
| 89 | 1.3.5.2 | Registrar cambios para CAO en FAT | milestone | 0d | 2022-11-16 | 2022-11-16 | 88 | 0d | Supervisor1 |  |
| 90 | 1.3.5.3 | Presentación del CAO |  | 1d | 2022-11-17 | 2022-11-17 | 89 | 0d | Supervisor1 | 8h |
| 91 | 1.4 | **FIN** |  | 0d | 2022-11-17 | 2022-11-17 |  | 0d |  |  |
| 92 | 1.4.1 | FIN | milestone | 0d | 2022-11-17 | 2022-11-17 | 90 | 0d |  |  |

Notes:
- 81: Instalación de soportes. Presentación y montaje de tramo recto con tapa
- 83: Tendido de conductores mallados de un variador en TB1226 a su respectivo motor
- 86: Armado de fichas y montaje de cables Profinet
- 90: Presentación del Conforme a Obra
